# Part1

How a schedule from MS Project changed from version to version. A marks actual dates.

## Version 1 (saved 2023-02-01, file Part1.mpp)

| ID | WBS | Task | Duration | Start | Finish | Predecessors | Total float |
| --- | --- | --- | --- | --- | --- | --- | --- |
| 1 | 1 | **POM1Project** | 135d | 2012-01-03 | 2012-07-12 |  | 0d |
| 2 | 1.1 | **R&D product development** | 45d | 2012-01-03 | 2012-03-06 |  | 0d |
| 3 |  | Need survey | 20d | 2012-01-03 | 2012-01-31 |  | 0d |
| 4 |  | Set product specs | 15d | 2012-02-01 | 2012-02-21 | 3 | 0d |
| 5 |  | Shelf life report | 10d | 2012-02-22 | 2012-03-06 | 4 | 0d |
| 6 |  | Nutrition report | 5d | 2012-02-22 | 2012-02-28 | 4 | 5d |
| 7 |  | Select fruit suppliers | 20d | 2012-03-07 | 2012-04-03 | 5, 6 | 0d |
| 8 | 1.3 | **Initial Production** | 85d | 2012-02-22 | 2012-06-20 |  | 0d |
| 9 |  | Equipment rehab | 30d | 2012-02-22 | 2012-04-03 | 4 | 0d |
| 10 |  | Production trials | 15d | 2012-04-04 | 2012-04-24 | 7, 9 | 0d |
| 11 |  | Quality trials | 20d | 2012-04-25 | 2012-05-22 | 10 | 0d |
| 12 |  | Quality metrics | 5d | 2012-05-23 | 2012-05-30 | 11 | 0d |
| 13 |  | Quality training | 15d | 2012-05-31 | 2012-06-20 | 12 | 0d |
| 14 | 1.4 | **Distribution** | 45d | 2012-03-07 | 2012-05-08 |  | 5d |
| 15 |  | Market testing | 30d | 2012-03-07 | 2012-04-17 | 5, 6 | 5d |
| 16 |  | Package design | 15d | 2012-04-18 | 2012-05-08 | 15 | 30d |
| 17 |  | Select distributors | 25d | 2012-03-07 | 2012-04-10 | 5, 6 | 50d |
| 18 | 1.5 | **Legal** | 15d | 2012-04-18 | 2012-05-08 |  | 5d |
| 19 |  | Complete FDA certification | 15d | 2012-04-18 | 2012-05-08 | 7, 15 | 5d |
| 20 |  | Register trademark | 5d | 2012-04-18 | 2012-04-24 | 7, 15 | 25d |
| 21 |  | Prepare product launch | 15d | 2012-06-21 | 2012-07-12 | 13, 16, 17, 19FS+25d, 20FS+15d | 0d |

## Version 2 (saved 2023-02-01, file Part2.mpp)

Last finish 2012-07-12 → 2012-07-19 (+7d).

Changed:

| ID | Task | Start | Finish | Duration | Total float | Other |
| --- | --- | --- | --- | --- | --- | --- |
| 1 | **POM1Project** |  | 2012-07-12 → 2012-07-19 (+7d) | 135d → 140d |  |  |
| 2 | **R&D product development** |  | 2012-03-06 → 2012-03-13 (+7d) | 45d → 50d |  |  |
| 3 | Need survey |  |  |  |  | resources none → Marketing staff [500%] |
| 4 | Set product specs |  |  |  |  | resources none → R&D [400%]; Marketing staff [200%] |
| 5 | Shelf life report |  |  |  | 0d → 5d | resources none → R&D [300%] |
| 6 | Nutrition report | 2012-02-22 → 2012-03-07 (+14d) | 2012-02-28 → 2012-03-13 (+14d) |  | 5d → 0d | resources none → R&D [300%] |
| 7 | Select fruit suppliers | 2012-03-07 → 2012-03-14 (+7d) | 2012-04-03 → 2012-04-10 (+7d) |  |  | resources none → Purchasing |
| 8 | **Initial Production** |  | 2012-06-20 → 2012-06-27 (+7d) | 85d → 90d |  |  |
| 9 | Equipment rehab |  |  |  | 0d → 5d | resources none → Engineering [1000%]; Production [2000%] |
| 10 | Production trials | 2012-04-04 → 2012-04-11 (+7d) | 2012-04-24 → 2012-05-01 (+7d) |  |  | resources none → Production [1500%]; Purchasing; Engineering [1000%] |
| 11 | Quality trials | 2012-04-25 → 2012-05-02 (+7d) | 2012-05-22 → 2012-05-30 (+8d) |  |  | resources none → Quality engineers [300%]; Production [500%] |
| 12 | Quality metrics | 2012-05-23 → 2012-05-31 (+8d) | 2012-05-30 → 2012-06-06 (+7d) |  |  | resources none → Quality engineers [300%]; Production |
| 13 | Quality training | 2012-05-31 → 2012-06-07 (+7d) | 2012-06-20 → 2012-06-27 (+7d) |  |  | resources none → Quality engineers [300%]; Production [1500%] |
| 14 | **Distribution** | 2012-03-07 → 2012-03-14 (+7d) | 2012-05-08 → 2012-06-20 (+43d) | 45d → 70d |  |  |
| 15 | Market testing | 2012-03-07 → 2012-03-14 (+7d) | 2012-04-17 → 2012-04-24 (+7d) |  |  | resources none → Marketing staff [500%] |
| 16 | Package design | 2012-04-18 → 2012-04-25 (+7d) | 2012-05-08 → 2012-05-15 (+7d) |  |  | resources none → Designers [300%]; Marketing staff |
| 17 | Select distributors | 2012-03-07 → 2012-05-16 (+70d) | 2012-04-10 → 2012-06-20 (+71d) |  | 50d → 5d | resources none → Marketing staff [500%] |
| 18 | **Legal** | 2012-04-18 → 2012-04-25 (+7d) | 2012-05-08 → 2012-05-22 (+14d) | 15d → 20d |  |  |
| 19 | Complete FDA certification | 2012-04-18 → 2012-04-25 (+7d) | 2012-05-08 → 2012-05-15 (+7d) |  |  | resources none → Legal staff [300%] |
| 20 | Register trademark | 2012-04-18 → 2012-05-16 (+28d) | 2012-04-24 → 2012-05-22 (+28d) |  | 25d → 10d | resources none → Legal staff [300%] |
| 21 | Prepare product launch | 2012-06-21 → 2012-06-28 (+7d) | 2012-07-12 → 2012-07-19 (+7d) |  |  | resources none → Quality engineers [300%]; Purchasing [200%]; Production [1500%]; Marketing staff [500%]; Engineering [500%]; R&D |

## Version 3 (data date 2012-03-31, saved 2023-02-01, file Part4.mpp)

Last finish 2012-07-19 → 2012-07-26 (+7d). Complete tasks 0 → 4.

Changed:

| ID | Task | Start | Finish | Duration | Complete | Total float | Other |
| --- | --- | --- | --- | --- | --- | --- | --- |
| 1 | **POM1Project** | 2012-01-03 A | 2012-07-19 → 2012-07-26 (+7d) | 140d → 145d | 0% → 29% |  | baseline start none → 2012-01-03; baseline finish none → 2012-07-19 |
| 2 | **R&D product development** | 2012-01-03 A | 2012-03-13 → 2012-03-19 A (+6d) | 50d → 54d | 0% → 100% | 0d → none | baseline start none → 2012-01-03; baseline finish none → 2012-03-13 |
| 3 | Need survey | 2012-01-03 A | 2012-01-31 → 2012-02-02 A (+2d) | 20d → 22d | 0% → 100% | 0d → none | baseline start none → 2012-01-03; baseline finish none → 2012-01-31 |
| 4 | Set product specs | 2012-02-01 → 2012-02-03 A (+2d) | 2012-02-21 → 2012-02-28 A (+7d) | 15d → 18d | 0% → 100% | 0d → none | baseline start none → 2012-02-01; baseline finish none → 2012-02-21 |
| 5 | Shelf life report | 2012-02-22 → 2012-02-29 A (+7d) | 2012-03-06 → 2012-03-13 A (+7d) |  | 0% → 100% | 5d → none | baseline start none → 2012-02-22; baseline finish none → 2012-03-06 |
| 6 | Nutrition report | 2012-03-07 → 2012-03-14 A (+7d) | 2012-03-13 → 2012-03-19 A (+6d) | 5d → 4d | 0% → 100% | 0d → none | baseline start none → 2012-03-07; baseline finish none → 2012-03-13 |
| 7 | Select fruit suppliers | 2012-03-14 → 2012-03-20 (+6d) | 2012-04-10 → 2012-04-16 (+6d) |  |  | 0d → 1d | baseline start none → 2012-03-14; baseline finish none → 2012-04-10 |
| 8 | **Initial Production** | 2012-02-22 → 2012-02-29 A (+7d) | 2012-06-27 → 2012-07-05 (+8d) |  | 0% → 26% |  | baseline start none → 2012-02-22; baseline finish none → 2012-06-27 |
| 9 | Equipment rehab | 2012-02-22 → 2012-02-29 A (+7d) | 2012-04-03 → 2012-04-17 (+14d) | 30d → 35d | 0% → 66% | 5d → 0d | baseline start none → 2012-02-22; baseline finish none → 2012-04-03 |
| 10 | Production trials | 2012-04-11 → 2012-04-18 (+7d) | 2012-05-01 → 2012-05-08 (+7d) |  |  |  | baseline start none → 2012-04-11; baseline finish none → 2012-05-01 |
| 11 | Quality trials | 2012-05-02 → 2012-05-09 (+7d) | 2012-05-30 → 2012-06-06 (+7d) |  |  |  | baseline start none → 2012-05-02; baseline finish none → 2012-05-30 |
| 12 | Quality metrics | 2012-05-31 → 2012-06-07 (+7d) | 2012-06-06 → 2012-06-13 (+7d) |  |  |  | baseline start none → 2012-05-31; baseline finish none → 2012-06-06 |
| 13 | Quality training | 2012-06-07 → 2012-06-14 (+7d) | 2012-06-27 → 2012-07-05 (+8d) |  |  |  | baseline start none → 2012-06-07; baseline finish none → 2012-06-27 |
| 14 | **Distribution** | 2012-03-14 → 2012-03-20 (+6d) | 2012-06-20 → 2012-06-26 (+6d) |  |  | 5d → 6d | baseline start none → 2012-03-14; baseline finish none → 2012-06-20 |
| 15 | Market testing | 2012-03-14 → 2012-03-20 (+6d) | 2012-04-24 → 2012-04-30 (+6d) |  |  | 5d → 6d | baseline start none → 2012-03-14; baseline finish none → 2012-04-24 |
| 16 | Package design | 2012-04-25 → 2012-05-01 (+6d) | 2012-05-15 → 2012-05-21 (+6d) |  |  | 30d → 31d | baseline start none → 2012-04-25; baseline finish none → 2012-05-15 |
| 17 | Select distributors | 2012-05-16 → 2012-05-22 (+6d) | 2012-06-20 → 2012-06-26 (+6d) |  |  | 5d → 6d | baseline start none → 2012-05-16; baseline finish none → 2012-06-20 |
| 18 | **Legal** | 2012-04-25 → 2012-05-01 (+6d) | 2012-05-22 → 2012-05-29 (+7d) |  |  | 5d → 6d | baseline start none → 2012-04-25; baseline finish none → 2012-05-22 |
| 19 | Complete FDA certification | 2012-04-25 → 2012-05-01 (+6d) | 2012-05-15 → 2012-05-21 (+6d) |  |  | 5d → 6d | baseline start none → 2012-04-25; baseline finish none → 2012-05-15 |
| 20 | Register trademark | 2012-05-16 → 2012-05-22 (+6d) | 2012-05-22 → 2012-05-29 (+7d) |  |  | 10d → 11d | baseline start none → 2012-05-16; baseline finish none → 2012-05-22 |
| 21 | Prepare product launch | 2012-06-28 → 2012-07-06 (+8d) | 2012-07-19 → 2012-07-26 (+7d) |  |  |  | baseline start none → 2012-06-28; baseline finish none → 2012-07-19 |
